# javaSeisPSPSDM

Schedule from GanttProject, 2015-04-28 to 2015-07-03.
Orthogonal Geophysics Inc
Create a stand-alone 3D phase shift shot migration using JavaSeis classes and supporting libraries / Read input data and velocity model from JavaSeis datasets / Output imaged shot as a JavaSeis dataset / Develop simple 2D and 3D viewers for validating results / Complete the prototype by the end of May, 2015 / Demonstrate the program using the SEG Salt 45 shot model
Holidays every year on 01-01, 07-01, 10-08, 12-25

## Calendars

- Project calendar: Mon-Fri working; Sat-Sun off.

## Resources

| Resource | Group |
| --- | --- |
| Rob Ferguson |  |
| Marcus Wilson | computational physics specialist |
| Chad Hogan | computational physics scientist |
| Charles Mosher | computational physics advisor |

## Schedule

| ID | Task | Type | Duration | Start | Finish | Predecessors | Complete | Resources |
| --- | --- | --- | --- | --- | --- | --- | --- | --- |
| 1 | 1. platform development and design | milestone | 0d | 2015-05-05 | 2015-05-05 | 8 | 90% | Rob Ferguson [50%]; Marcus Wilson; Chad Hogan; Charles Mosher |
| 2 | communication |  | 1d | 2015-04-28 | 2015-04-28 |  | 100% | Rob Ferguson |
| 3 | javaseis dev release |  | 1d | 2015-04-29 | 2015-04-29 | 2 | 100% | Charles Mosher |
| 4 | GIT repo on OG0001 |  | 1d | 2015-04-30 | 2015-04-30 | 3 | 100% | Marcus Wilson |
| 5 | OG0001 team logon |  | 1d | 2015-04-29 | 2015-04-29 | 2 | 100% | Marcus Wilson |
| 6 | GIT repo team acces |  | 1d | 2015-05-01 | 2015-05-01 | 2, 3, 4, 5 | 100% | Marcus Wilson |
| 7 | Set up Gantt chart |  | 1d | 2015-05-04 | 2015-05-04 | 2, 4, 5, 6 | 100% | Charles Mosher |
| 8 | javaseis / eclipse base classes |  | 1d | 2015-05-04 | 2015-05-04 | 3, 4, 6 | 100% | Marcus Wilson [50%]; Chad Hogan [50%] |
| 9 | 2. base class construction | milestone | 0d | 2015-06-02 | 2015-06-02 |  |  |  |
| 10 | 3D FFT release to GIThub |  | 1d | 2015-05-05 | 2015-05-05 | 1, 2 | 100% | Charles Mosher |
| 11 | pull 3D FFT and run |  | 8d | 2015-05-06 | 2015-05-15 | 10 | 100% | Marcus Wilson |
| 12 | ppt of initial design |  | 31d | 2015-05-05 | 2015-06-16 | 1 | 30% | Rob Ferguson |
| 13 | distributed array classes |  | 36d | 2015-05-05 | 2015-06-23 | 1 | 60% | Marcus Wilson [20%]; Charles Mosher [80%] |
| 14 | 3D viewer |  | 6d | 2015-06-16 | 2015-06-23 |  | 20% | Marcus Wilson [80%]; Charles Mosher [20%] |
| 15 | stationary extrapolator |  | 6d | 2015-06-16 | 2015-06-23 |  | 20% | Marcus Wilson [80%]; Charles Mosher [20%] |
| 16 | cmplx abs |  | 6d | 2015-06-16 | 2015-06-23 |  | 20% | Marcus Wilson [80%]; Charles Mosher [20%] |
| 17 | build PSPSDM and migrate |  | 7d | 2015-06-24 | 2015-07-03 | 11, 12, 13, 15 |  | Rob Ferguson [25%]; Marcus Wilson [25%]; Chad Hogan [25%]; Charles Mosher [25%] |

Notes:
- 1: define video communication tools and desktop share / create a development release of JavaSeis on Github / create a GIT repo on OG0001 / validate that team can log into OG0001 / validate that team can access OG0001 GIT repo / create initial Eclipse project on GitHub / prepare Tracking document and put to GIT repo / prepare GantProject document and push to GIT repo / build an initial design in PowerPoint and push to GIT repo / become familiar with base classes in JavaSeis and Eclipse
- 2: The current solution is / mumble: push-to-talk voice / vnc: team user "vncshare" to share desktop
- 3: prepare a dev release on GIThub for OG use
- 4: GIT repo is /home/git/repos/javaseis.git
- 5: All team members connect by VNC / Security using screen and tunnel - no vnc encription
- 6: team can pull javaseis repo
- 7: Gantt chart is updated continuously
- 8: Marcus and Chad become familiar with javaseis and eclips base classes
- 9: complete the Gantt Chart / release 3D FFT example with Parallel I/O to GitHub repo / pull release and run / build a ppt of an initial design and push to GIT repo / Marcus start working with the Distributed Array classes to design and implement the phase shift and imaging class. / begin design of phase shift and imaging classes based on distributed arrays / migrate Marcus's 3D shot gather
- 10: Chuck releases 3D FFT to GIThub
- 12: 1) parallel IO / 2) Transpose / 3) FT t-w / 4) stuff / 5) IFT w->t / 6) ITranspose / 7) parallel IO
- 13: Marcus begins work with DA classes to design and implement phaseshift and imaging classes / Chuck: / complex use cases for the volume tool / File IO with different sizes (see ExtractPWaveData.java) / A simple accumulator (stacking) / Add Marcus as a committer to the repo so he can push his branch
- 14: develop a 3D viewer for QC / DAMosaicPlot to get panel plot triples
- 15: develop and test the constant velocity extrapolator
- 16: create real / complex / absolute value vollumes for 3D plots
- 17: migrate Marcus's 3D shot record
